# UP_Prodavnica_IB150281

Schedule from MS Project, 2018-05-09 to 2018-07-10, costs in KM.
Seminarski rad

## Calendars

- Standard: Mon-Fri 08:00-12:00, 13:00-17:00; Sat-Sun off.

## Resources

| Resource | Rate | Cost per use |
| --- | --- | --- |
| Promotivni letci |  | 200 |
| Radnik 2 | 4 |  |
| Radnik 1 | 4 |  |
| Sekundarni proizvodi |  | 4000 |
| Primarni proizvodi |  | 13000 |
| Ovjernica |  | 10 |
| Knjige |  | 30 |
| Služba za deratizaciju |  | 120 |
| Službenici za ocjenu prostora |  | 40 |
| Potvrda o baždarenju vage |  | 120 |
| Vaga |  | 250 |
| Skener bar kodova |  | 250 |
| Trgovinski software |  | 150 |
| Računar |  | 900 |
| Fiskalni uređaj I priključak |  | 700 |
| Porezni broj |  | 15 |
| Zahtjev za fiskalizaciju |  | 10 |
| Reklama |  | 100 |
| Police |  | 300 |
| Građevinski materijal |  | 450 |
| Fizički radnik | 6 |  |
| Majstor 2 | 8 |  |
| Majstor 1 | 8 |  |
| Račun |  | 30 |
| Statistički broj |  |  |
| ID broj |  | 30 |
| Pečat |  | 40 |
| Taksa |  | 100 |
| Uvjerenje o izmirenim poreznim obavezama |  | 10 |
| Rješenje o obavljanju djelatnosti |  |  |
| Uvjerenje o nekažnjavanju |  | 15 |
| Ljekarsko uvjerenje |  | 15 |
| Uvjerenje o poslovnoj sposobnosti |  | 10 |
| Uvjerenje o državljanstvu |  |  |
| Vlasnik |  |  |
| Programer | 15 |  |
| Maskota | 10 |  |
| Pomoćni radnik | 7 |  |
| Promotivni plakati |  | 100 |

## Schedule

| ID | WBS | Task | Type | Duration | Start | Finish | Predecessors | Baseline start | Baseline finish | Baseline duration | Baseline 1 start | Baseline 1 finish | Total slack | Constraint | Resources | Work | Cost | Baseline cost |
| --- | --- | --- | --- | --- | --- | --- | --- | --- | --- | --- | --- | --- | --- | --- | --- | --- | --- | --- |
| 1 | 1 | **Otvaranje prodavnice zdrave hrane** |  | 45d | 2018-05-09 | 2018-07-10 |  | 2018-05-09 | 2018-07-10 | 45d | 2018-05-09 | 2018-07-10 | 0d |  |  | 699.2h | 23,090 | 23,090 |
| 2 | 1.1 | Prikupljanje dokumentacije |  | 1d | 2018-05-09 | 2018-05-09 |  | 2018-05-09 | 2018-05-09 | 1d | 2018-05-09 | 2018-05-09 | 0d |  | Uvjerenje o državljanstvu; Uvjerenje o izmirenim poreznim obavezama; Uvjerenje o nekažnjavanju; Uvjerenje o poslovnoj sposobnosti; Vlasnik | 8h | 35 | 35 |
| 3 | 1.2 | Podnošenje dokumenata nadležnim organima |  | 1d | 2018-05-10 | 2018-05-10 | 2 | 2018-05-10 | 2018-05-10 | 1d | 2018-05-10 | 2018-05-10 | 0d |  | Taksa; Vlasnik | 8h | 100 | 100 |
| 4 | 1.3 | Dobijanje odobrenja od nadležnih organa | milestone | 0d | 2018-05-10 | 2018-05-10 | 3 | 2018-05-10 | 2018-05-10 | 0d | 2018-05-10 | 2018-05-10 | 0d |  | Rješenje o obavljanju djelatnosti; Vlasnik |  |  |  |
| 5 | 1.4 | Izrada pečata |  | 1d | 2018-05-11 | 2018-05-11 | 4 | 2018-05-11 | 2018-05-11 | 1d | 2018-05-11 | 2018-05-11 | 0d |  | Pečat; Vlasnik | 8h | 40 | 40 |
| 6 | 1.5 | Slanje zahtjeva za dobijanje statističkog broja |  | 1d | 2018-05-14 | 2018-05-14 | 5 | 2018-05-14 | 2018-05-14 | 1d | 2018-05-14 | 2018-05-14 | 0d |  | Statistički broj |  |  |  |
| 7 | 1.6 | Dobijanje statističkog broja |  | 1d | 2018-05-15 | 2018-05-15 | 6 | 2018-05-15 | 2018-05-15 | 1d | 2018-05-15 | 2018-05-15 | 0d |  | Statistički broj; Vlasnik | 8h |  |  |
| 8 | 1.7 | Dobijanje ID broja i šifre djelatnosti |  | 1d | 2018-05-16 | 2018-05-16 | 7 | 2018-05-16 | 2018-05-16 | 1d | 2018-05-16 | 2018-05-16 | 0d |  | ID broj; Vlasnik | 8h | 30 | 30 |
| 9 | 1.8 | Otvaranje transakcijskog računa u banci |  | 1d | 2018-05-17 | 2018-05-17 | 8 | 2018-05-17 | 2018-05-17 | 1d | 2018-05-17 | 2018-05-17 | 0d |  | Račun; Vlasnik | 8h | 30 | 30 |
| 10 | 1.9 | Uređivanje i opremanje prostora |  | 10d | 2018-05-18 | 2018-05-31 | 9 | 2018-05-18 | 2018-05-31 | 10d | 2018-05-18 | 2018-05-31 | 0d |  | Fizički radnik; Građevinski materijal; Majstor 1; Majstor 2; Police; Reklama | 240h | 2,610 | 2,610 |
| 11 | 1.10 | Objava konkursa za prijem 2 radnika |  | 1d | 2018-05-18 | 2018-05-18 | 10SS | 2018-05-18 | 2018-05-18 | 1d | 2018-05-18 | 2018-05-18 | 0d |  | Vlasnik | 8h |  |  |
| 12 | 1.11 | Čekanje na rezultate konkursa |  | 7d | 2018-05-21 | 2018-05-29 | 11 | 2018-05-21 | 2018-05-29 | 7d | 2018-05-21 | 2018-05-29 | 0d |  | Vlasnik | 56h |  |  |
| 13 | 1.12 | Prijava radnog odnosa vlasnika i radnika |  | 1d | 2018-05-30 | 2018-05-30 | 12 | 2018-05-30 | 2018-05-30 | 1d | 2018-05-30 | 2018-05-30 | 0d |  | Vlasnik [40%] | 3.2h |  |  |
| 14 | 1.13 | Podnošenje zahtjeva za inicijalnu fiskalizaciju |  | 1d | 2018-05-30 | 2018-05-30 | 13SS | 2018-05-30 | 2018-05-30 | 1d | 2018-05-30 | 2018-05-30 | 0d |  | Vlasnik [30%]; Zahtjev za fiskalizaciju | 2.4h | 10 | 10 |
| 15 | 1.14 | Registracija u sistem PDV-a (dobijanje poreznog broja) |  | 1d | 2018-05-30 | 2018-05-30 | 14SS | 2018-05-30 | 2018-05-30 | 1d | 2018-05-30 | 2018-05-30 | 0d |  | Porezni broj; Vlasnik [30%] | 2.4h | 15 | 15 |
| 16 | 1.15 | Nabavka fiskalnog uređaja i priključka |  | 1d | 2018-05-31 | 2018-05-31 | 15 | 2018-05-31 | 2018-05-31 | 1d | 2018-05-31 | 2018-05-31 | 0d |  | Fiskalni uređaj I priključak; Vlasnik | 8h | 700 | 700 |
| 17 | 1.16 | Nabavka računara i softwera |  | 1d | 2018-06-01 | 2018-06-01 | 16 | 2018-06-01 | 2018-06-01 | 1d | 2018-06-01 | 2018-06-01 | 0d |  | Račun; Trgovinski software; Vlasnik | 8h | 180 | 180 |
| 18 | 1.17 | Nabavka skenera i vage |  | 1d | 2018-06-04 | 2018-06-04 | 17 | 2018-06-04 | 2018-06-04 | 1d | 2018-06-04 | 2018-06-04 | 0d |  | Skener bar kodova; Vaga; Vlasnik | 8h | 500 | 500 |
| 19 | 1.18 | Baždarenje vage |  | 1d | 2018-06-05 | 2018-06-05 | 18 | 2018-06-05 | 2018-06-05 | 1d | 2018-06-05 | 2018-06-05 | 0d |  | Potvrda o baždarenju vage; Vlasnik | 8h | 120 | 120 |
| 20 | 1.19 | Podnošenje izjave o ispunjavanju tehničkih uslova za početak obavljanja djelatnosti |  | 1d | 2018-06-06 | 2018-06-06 | 19 | 2018-06-06 | 2018-06-06 | 1d | 2018-06-06 | 2018-06-06 | 0d |  | Vlasnik | 8h |  |  |
| 21 | 1.20 | Dolazak službe za kontrolu i ocjenu prostora |  | 1d | 2018-06-07 | 2018-06-07 | 20 | 2018-06-07 | 2018-06-07 | 1d | 2018-06-07 | 2018-06-07 | 0d |  | Službenici za ocjenu prostora | 8h | 40 | 40 |
| 22 | 1.21 | Deratizacija prostora |  | 1d | 2018-06-08 | 2018-06-08 | 21 | 2018-06-08 | 2018-06-08 | 1d | 2018-06-08 | 2018-06-08 | 0d |  | Služba za deratizaciju | 8h | 120 | 120 |
| 23 | 1.22 | Kupovina potrebnih knjiga (KIF, KUF) |  | 1d | 2018-06-11 | 2018-06-11 | 22 | 2018-06-11 | 2018-06-11 | 1d | 2018-06-11 | 2018-06-11 | 0d |  | Vlasnik | 8h |  |  |
| 24 | 1.23 | Ovjera knjiga |  | 2d | 2018-06-12 | 2018-06-13 | 23 | 2018-06-12 | 2018-06-13 | 2d | 2018-06-12 | 2018-06-13 | 0d |  | Knjige; Vlasnik [50%] | 8h | 30 | 30 |
| 25 | 1.24 | Pronalazak knjigovođe |  | 2d | 2018-06-12 | 2018-06-13 | 24SS | 2018-06-12 | 2018-06-13 | 2d | 2018-06-12 | 2018-06-13 | 0d |  | Vlasnik [50%]; Ovjernica | 8h | 10 | 10 |
| 26 | 1.25 | Potpisivanje ugovora sa dobavljačima |  | 1d | 2018-06-14 | 2018-06-14 | 25 | 2018-06-14 | 2018-06-14 | 1d | 2018-06-14 | 2018-06-14 | 0d | finish no earlier than 2018-06-14 | Vlasnik | 8h |  |  |

| ID | WBS | Task | Duration | Start | Finish | Predecessors | Baseline start | Baseline finish | Baseline duration | Baseline 1 start | Baseline 1 finish | Total slack | Free slack | Resources | Work | Cost | Baseline cost |
| --- | --- | --- | --- | --- | --- | --- | --- | --- | --- | --- | --- | --- | --- | --- | --- | --- | --- |
| 27 | 1.26 | **Narudžba proizvoda** | 4d | 2018-06-15 | 2018-06-20 |  | 2018-06-15 | 2018-06-20 | 4d | 2018-06-15 | 2018-06-20 | 0d |  |  | 32h | 17,000 | 17,000 |
| 28 | 1.26.1 | Narudžba početnih osnovnih proizvoda | 1d | 2018-06-15 | 2018-06-15 | 26 | 2018-06-15 | 2018-06-15 | 1d | 2018-06-15 | 2018-06-15 | 0d |  | Primarni proizvodi; Vlasnik | 8h | 13,000 | 13,000 |
| 29 | 1.26.2 | Narudžba ostalih proizvoda | 1d | 2018-06-18 | 2018-06-18 | 28 | 2018-06-18 | 2018-06-18 | 1d | 2018-06-18 | 2018-06-18 | 0d |  | Sekundarni proizvodi; Vlasnik | 8h | 4,000 | 4,000 |
| 30 | 1.26.3 | Isporuka proizvoda | 2d | 2018-06-19 | 2018-06-20 | 29 | 2018-06-19 | 2018-06-20 | 2d | 2018-06-19 | 2018-06-20 | 0d |  | Vlasnik | 16h |  |  |
| 31 | 1.27 | Raspored proizvoda po policama | 5d | 2018-06-21 | 2018-06-27 | 30 | 2018-06-21 | 2018-06-27 | 5d | 2018-06-21 | 2018-06-27 | 0d |  | Radnik 1; Radnik 2; Vlasnik | 120h | 320 | 320 |
| 32 | 1.28 | Unos proizvoda u računar | 1d | 2018-06-28 | 2018-06-28 | 31 | 2018-06-28 | 2018-06-28 | 1d | 2018-06-28 | 2018-06-28 | 0d |  | Radnik 1; Radnik 2 | 16h | 64 | 64 |
| 33 | 1.29 | **Promocija/marketing** | 7d | 2018-06-29 | 2018-07-09 |  | 2018-06-29 | 2018-07-09 | 7d | 2018-06-29 | 2018-07-09 | 0d |  |  | 71.2h | 1,096 | 1,096 |
| 34 | 1.29.1 | Kreiranje mini aplikacije za naručivanje I kućnu dostavu | 7d | 2018-06-29 | 2018-07-09 | 32 | 2018-06-29 | 2018-07-09 | 7d | 2018-06-29 | 2018-07-09 | 0d |  | Programer [90%] | 50.4h | 756 | 756 |
| 35 | 1.29.2 | Kreiranje stranica na društvenim mrežama | 1d | 2018-06-29 | 2018-06-29 | 34SS | 2018-06-29 | 2018-06-29 | 1d | 2018-06-29 | 2018-06-29 | 7d |  | Programer [10%] | 0.8h | 12 | 12 |
| 36 | 1.29.3 | Izrada promotivnog materijala(plakati I brošure) | 2d | 2018-06-29 | 2018-07-02 | 34SS | 2018-06-29 | 2018-07-02 | 2d | 2018-06-29 | 2018-07-02 | 5d | 0d | Promotivni letci; Promotivni plakati; Vlasnik | 16h | 300 | 300 |
| 37 | 1.29.4 | Lijepljenje plakata I dijeljenje letaka | 1d | 2018-07-03 | 2018-07-03 | 36 | 2018-07-03 | 2018-07-03 | 1d | 2018-07-03 | 2018-07-03 | 5d |  | Pomoćni radnik [50%] | 4h | 28 | 28 |
| 38 | 1.30 | Otvaranje prodavnice zdrave hrane | 1d | 2018-07-10 | 2018-07-10 | 34 | 2018-07-10 | 2018-07-10 | 1d | 2018-07-10 | 2018-07-10 | 0d |  | Maskota [50%]; Vlasnik | 12h | 40 | 40 |
